# Projeto Algar · BCAPI / BC Billing

Schedule from MS Project XML, 2026-10-02 to 2026-10-30, A marks actual dates.
Binário Cloud

## Calendars

- Padrão Brasil: Mon-Fri 08:00-12:00, 13:00-17:00; Sat-Sun off. Exceptions (off unless hours are given): 2026-10-12.

## Resources

| Resource |
| --- |
| Não atribuído |
| Binário Cloud |
| Algar |

## Schedule

| ID | WBS | Task | Duration | Start | Finish | Complete | Constraint | Resources | Responsável (empresa) | Status no painel |
| --- | --- | --- | --- | --- | --- | --- | --- | --- | --- | --- |
| 1 | 1 | **Marco 0 — Kickoff** | 13d | 2026-10-06 | 2026-10-23 | 82% |  |  |  |  |
| 2 | 1.1 | Publicar painel e liberar usuarios para acompanhamento | 8d | 2026-10-06 A | 2026-10-16 A | 100% | start no earlier than 2026-10-06 | Binário Cloud | Binário | Concluído |
| 3 | 1.2 | Definir pontos focais e cadência de acompanhamento | 2d | 2026-10-07 A | 2026-10-08 A | 100% | start no earlier than 2026-10-07 | Binário Cloud | Binário | Concluído |
| 4 | 1.3 | Reunião de Kickoff 08/10 - 16h | 2d | 2026-10-07 A | 2026-10-08 A | 100% | start no earlier than 2026-10-07 | Binário Cloud | Binário | Concluído |
| 5 | 1.4 | Validação de Marcos, responsáveis e datas | 7d | 2026-10-07 A | 2026-10-16 A | 100% | start no earlier than 2026-10-07 | Binário Cloud | Binário | Concluído |
| 6 | 1.5 | Elaboração da TAP | 6d | 2026-10-08 A | 2026-10-16 A | 100% | start no earlier than 2026-10-08 | Binário Cloud | Binário | Concluído |
| 7 | 1.6 | Envio/Assinatura da TAP | 7d | 2026-10-15 A | 2026-10-23 | 25% | start no earlier than 2026-10-15 | Binário Cloud; Algar | Binário + Algar | Aguardando retorno |
| 8 | 1.7 | Devolução da minuta contratual para Binario | 1d | 2026-10-16 A | 2026-10-16 | 50% | start no earlier than 2026-10-16 | Binário Cloud; Algar | Binário + Algar | Em andamento |
| 9 | 2 | **Marco 1 — SSO no portal B2B** | 20d | 2026-10-02 | 2026-10-30 | 31% |  |  |  |  |
| 10 | 2.1 | Concluir a configuração de OpenID Connect, Keycloak e Keystone e trocar o acesso de sandbox pelo fluxo produtivo | 12d | 2026-10-05 A | 2026-10-21 | 25% | start no earlier than 2026-10-05 | Binário Cloud; Algar | Binário + Algar | Aguardando retorno |
| 11 | 2.2 | Envio de credenciais | 3d | 2026-10-16 | 2026-10-20 |  | start no earlier than 2026-10-16 | Algar | Algar | Bloqueada |
| 12 | 2.3 | Incluir a URL do BCP no trusted dashboard da federação do Keystone (stage SP) para validar o SSO | 7d | 2026-10-07 A | 2026-10-16 A | 100% | start no earlier than 2026-10-07 | Binário Cloud; Algar | Binário + Algar | Concluído |
| 13 | 2.4 | Testar SSO no ambiente Sandbox | 13d | 2026-10-06 A | 2026-10-23 | 50% | start no earlier than 2026-10-06 | Binário Cloud | Binário | Em andamento |
| 14 | 2.5 | Configurar Identity Provider e o mapping no Keystone | 1d | 2026-10-16 A | 2026-10-16 | 50% | start no earlier than 2026-10-16 | Algar | Algar | Em andamento |
| 15 | 2.6 | Validar os cenários de MFA, token expirado e usuário removido do grupo | 1d | 2026-10-30 A | 2026-10-30 | 50% | start no earlier than 2026-10-30 | Binário Cloud | Binário | Em andamento |
| 16 | 2.7 | Consolidar a federação do Keystone nos templates do director | 7d | 2026-10-13 A | 2026-10-21 | 50% | start no earlier than 2026-10-13 | Algar | Algar | Em andamento |
| 17 | 2.8 | Provisionamento 2 VMs para produção | 3d | 2026-10-19 A | 2026-10-21 | 50% | start no earlier than 2026-10-19 | Algar | Algar | Em andamento |
| 18 | 2.9 | Documentar e alinhar virada para produção | 2d | 2026-10-29 | 2026-10-30 |  | start no earlier than 2026-10-29 | Binário Cloud | Binário | Não iniciado |
| 19 | 2.10 | Ajustes Mesa TI | 20d | 2026-10-02 | 2026-10-30 |  | start no earlier than 2026-10-02 | Binário Cloud | Binário | Não iniciado |
| 20 | 2.11 | Liberar Usuario | 20d | 2026-10-02 | 2026-10-30 |  | start no earlier than 2026-10-02 | Binário Cloud | Binário | Não iniciado |
| 21 | 2.12 | Levantamento de autenticação | 20d | 2026-10-02 | 2026-10-30 |  | start no earlier than 2026-10-02 | Algar | Algar | Não iniciado |
| 22 | 3 | **Marco 2 — Redirect do BCP API para o Portal B2B** | 17d | 2026-10-07 | 2026-10-30 | 33% |  |  |  |  |
| 23 | 3.1 | Confirmar o sistema de destino | 3d | 2026-10-07 A | 2026-10-09 A | 100% | start no earlier than 2026-10-07 | Binário Cloud; Algar | Binário + Algar | Concluído |
| 24 | 3.2 | Publicar o painel na porta 443 | 5d | 2026-10-07 | 2026-10-14 |  | start no earlier than 2026-10-07 | Algar | Algar | Não iniciado |
| 25 | 3.3 | Configurar a URL em redirect para produção | 2d | 2026-10-13 | 2026-10-14 |  | start no earlier than 2026-10-13 | Algar | Algar | Não iniciado |
| 26 | 3.4 | Exibir botão de custo apenas para perfil financeiro do Cloud Plus | 5d | 2026-10-15 A | 2026-10-21 A | 100% | start no earlier than 2026-10-15 | Binário Cloud | Binário | Concluído |
| 27 | 3.5 | Teste ponta a ponta | 4d | 2026-10-27 | 2026-10-30 |  | start no earlier than 2026-10-27 | Binário Cloud | Binário | Não iniciado |
| 28 | 3.6 | Criar no front o botão com a rota que leva o usuário para a tela certa | 17d | 2026-10-07 | 2026-10-30 |  | start no earlier than 2026-10-07 | Algar | Algar | Não iniciado |

Notes:
- 2: Responsável: Binário · Diogo Lerison / Status no painel: Concluído / Origem: atividade definida no planejamento / Responsável (pessoa): Diogo Lerison
- 3: Responsável: Binário · Diogo Lerison / Status no painel: Concluído / Origem: atividade definida no planejamento / Responsável (pessoa): Diogo Lerison
- 4: Responsável: Binário · Diogo Lerison / Status no painel: Concluído / Origem: atividade definida no planejamento / Responsável (pessoa): Diogo Lerison
- 5: Responsável: Binário · Diogo Lerison / Status no painel: Concluído / Origem: atividade definida no planejamento / Responsável (pessoa): Diogo Lerison
- 6: Responsável: Binário · Diogo Lerison / Status no painel: Concluído / Origem: atividade definida no planejamento / Responsável (pessoa): Diogo Lerison
- 7: Responsável: Binário + Algar · Diogo Lerison / Algar / Status no painel: Aguardando retorno / Origem: atividade definida no planejamento / Responsável (pessoa): Diogo Lerison / Algar
- 8: Responsável: Binário + Algar · Diogo Lerison / Emerson Alexandre, Julis Rimet e Flavio Janones / Status no painel: Em andamento / Origem: atividade definida no planejamento / Comentário: Aguardando retorno Emerson / Julis / Produtos · Responsável: Emerson Alexandre, Julis Rimet e Flavio Janones / Responsável (pessoa): Diogo Lerison / Emerson Alexandre, Julis Rimet e Flavio Janones
- 10: Responsável: Binário + Algar · Diogo Lerison / Daniel Prado e Luiz Gustavo / Status no painel: Aguardando retorno / Origem: atividade definida no planejamento / Comentário: Habilitar autenticação SSO e substituir o acesso de sandbox pelo fluxo produtivo. · Responsável: Daniel Prado e Luiz Gustavo / Responsável (pessoa): Diogo Lerison / Daniel Prado e Luiz Gustavo
- 11: Responsável: Algar · Julis Janones e Luiz Gustavo / Status no painel: Bloqueada / Origem: atividade definida no planejamento / Comentário: Responsáveis: Julis Janones e Luiz Gustavo / Responsável (pessoa): Julis Janones e Luiz Gustavo
- 12: Responsável: Binário + Algar · Diogo Lerison / Daniel Prado / Status no painel: Concluído / Origem: atividade definida no planejamento / Comentário: trusted_dashboard = · Responsável: Daniel Prado / Responsável (pessoa): Diogo Lerison / Daniel Prado
- 13: Responsável: Binário · Joab de Araújo Silva / Status no painel: Em andamento / Origem: atividade definida no planejamento / Responsável (pessoa): Joab de Araújo Silva
- 14: Responsável: Algar · Daniel Prado / Status no painel: Em andamento / Origem: atividade definida no planejamento / Comentário: ja realizado nas novas regiões Necessario ajuste em SP e Uberlandia, Responsável: Daniel Prado / Responsável (pessoa): Daniel Prado
- 15: Responsável: Binário · Joab de Araújo Silva / Status no painel: Em andamento / Origem: atividade definida no planejamento / Responsável (pessoa): Joab de Araújo Silva
- 16: Responsável: Algar · Glauberson / Status no painel: Em andamento / Origem: atividade definida no planejamento / Comentário: Responsável: Glauberson / Responsável (pessoa): Glauberson
- 17: Responsável: Algar · Glauberson / Status no painel: Em andamento / Origem: atividade definida no planejamento / Comentário: Responsável: Glauberson A configuração definida para cada uma das duas novas VMs é: 16 vCPU 32 GB de RAM 500 GB de disco LVM, mantendo espaço livre para expansão futura Instalação limpa, sem clone da POC / Responsável (pessoa): Glauberson
- 18: Responsável: Binário · Joab de Araújo Silva / Diogo Lerison / Status no painel: Não iniciado / Origem: atividade definida no planejamento / Responsável (pessoa): Joab de Araújo Silva / Diogo Lerison
- 19: Responsável: Binário · Guilherme Lopes / Tiago Gomes de Oliveira / Status no painel: Não iniciado / Origem: atividade definida no planejamento / Sem datas no ClickUp: usadas as datas do marco / Responsável (pessoa): Guilherme Lopes / Tiago Gomes de Oliveira
- 20: Responsável: Binário · Guilherme Lopes / Status no painel: Não iniciado / Origem: atividade definida no planejamento / Sem datas no ClickUp: usadas as datas do marco / Comentário: Liberar usuário de acordo com a forma que é feita a autenticação. informação levantada na tarefa anterior. / Responsável (pessoa): Guilherme Lopes
- 21: Responsável: Algar · Algar (a definir) / Status no painel: Não iniciado / Origem: atividade definida no planejamento / Sem datas no ClickUp: usadas as datas do marco / Comentário: Necessidade do cliente informar como é feita a autenticação, exemplo, na Binario atualmente é pelo Office 365. / Responsável (pessoa): Algar (a definir)
- 23: Responsável: Binário + Algar · Diogo Lerison / Algar / Status no painel: Concluído / Origem: atividade definida no planejamento / Comentário: sandbox --> https://sandbox-billing.cloudalgar.com.br/api/openstack/skyline/api/v1/sso/go produção --> https://consumo.cloudalgar.com.br/api/openstack/skyline/api/v1/sso/go Definir o novo nome , confirmar se consumo.cloudalgar.... Confirmar o sistema de destino: billing.cloudalgar.com.br (visão do cliente), não o Mesa de TI / Responsável (pessoa): Diogo Lerison / Algar
- 24: Responsável: Algar · Algar (a definir) / Status no painel: Não iniciado / Origem: atividade definida no planejamento / Comentário: Publicar o painel produtivo na porta 443 (hoje responde na 8080), com link limpo / Responsável (pessoa): Algar (a definir)
- 25: Responsável: Algar · Algar (a definir) / Status no painel: Não iniciado / Origem: atividade definida no planejamento / Responsável (pessoa): Algar (a definir)
- 26: Responsável: Binário · Diogo Lerison / Status no painel: Concluído / Origem: atividade definida no planejamento / Comentário: Role Financeiro existente. / Responsável (pessoa): Diogo Lerison
- 27: Responsável: Binário · Diogo Lerison / Joab de Araújo Silva / Status no painel: Não iniciado / Origem: atividade definida no planejamento / Responsável (pessoa): Diogo Lerison / Joab de Araújo Silva
- 28: Responsável: Algar · Algar (a definir) / Status no painel: Não iniciado / Origem: atividade definida no planejamento / Sem datas no ClickUp: usadas as datas do marco / Responsável (pessoa): Algar (a definir)

| ID | WBS | Task | Duration | Start | Finish | Complete | Constraint | Resources | Responsável (empresa) | Status no painel |
| --- | --- | --- | --- | --- | --- | --- | --- | --- | --- | --- |
| 29 | 4 | **Marco 3 — API e SKU e Flavors** | 17d | 2026-10-07 | 2026-10-30 | 5% |  |  |  |  |
| 30 | 4.1 | Envio do Link da documentação | 7d | 2026-10-07 | 2026-10-16 |  | start no earlier than 2026-10-07 | Binário Cloud | Binário | Não iniciado |
| 31 | 4.2 | Detalhar solicitações da API | 5d | 2026-10-08 A | 2026-10-15 | 50% | start no earlier than 2026-10-08 | Binário Cloud | Binário | Em andamento |
| 32 | 4.3 | Levantamento necessidade de preço ou especificação | 6d | 2026-10-08 | 2026-10-16 |  | start no earlier than 2026-10-08 | Binário Cloud | Binário | Não iniciado |
| 33 | 4.4 | Mapear de onde vêm os SKUs e como eles se ligam aos flavors do Nova | 3d | 2026-10-13 | 2026-10-15 |  | start no earlier than 2026-10-13 | Binário Cloud | Binário | Não iniciado |
| 34 | 4.5 | Definir a autenticação da API | 3d | 2026-10-16 | 2026-10-20 |  | start no earlier than 2026-10-16 | Binário Cloud | Binário | Não iniciado |
| 35 | 4.6 | Entendimento da demanda | 3d | 2026-10-16 | 2026-10-20 |  | start no earlier than 2026-10-16 | Binário Cloud | Binário | Não iniciado |
| 36 | 4.7 | Montar o contrato da API (OpenAPI) e validar com o consumidor | 3d | 2026-10-16 | 2026-10-20 |  | start no earlier than 2026-10-16 | Binário Cloud | Binário | Não iniciado |
| 37 | 4.8 | Implementar o endpoint com a transformação para o formato deles | 5d | 2026-10-21 | 2026-10-27 |  | start no earlier than 2026-10-21 | Binário Cloud | Binário | Não iniciado |
| 38 | 4.9 | Teste, documentação e deploy | 3d | 2026-10-27 | 2026-10-29 |  | start no earlier than 2026-10-27 | Binário Cloud | Binário | Não iniciado |
| 39 | 4.10 | Homologar | 2d | 2026-10-29 | 2026-10-30 |  | start no earlier than 2026-10-29 | Binário Cloud; Algar | Binário + Algar | Não iniciado |
| 40 | 5 | **Marco 4 — Novas regiões** | 17d | 2026-10-05 | 2026-10-28 | 23% |  |  |  |  |
| 41 | 5.1 | Ajuste de casas decimais | 8d | 2026-10-05 A | 2026-10-15 A | 100% | start no earlier than 2026-10-05 | Binário Cloud | Binário | Concluído |
| 42 | 5.2 | Enviar as diretrizes de dimensionamento | 3d | 2026-10-07 A | 2026-10-09 A | 100% | start no earlier than 2026-10-07 | Binário Cloud | Binário | Concluído |
| 43 | 5.3 | Definir a cobrança por roteador/projeto e por banda (avaliar aditivo contratual com Produtos) | 7d | 2026-10-07 | 2026-10-16 |  | start no earlier than 2026-10-07 | Algar | Algar | Não iniciado |
| 44 | 5.4 | Definir o ambiente inicial da coleta Canonical: staging SP, Fortaleza ou Porto Alegre | 7d | 2026-10-07 | 2026-10-16 |  | start no earlier than 2026-10-07 | Algar | Algar | Não iniciado |
| 45 | 5.5 | Começar coleta Porto Alegre | 12d | 2026-10-07 | 2026-10-23 |  | start no earlier than 2026-10-07 | Binário Cloud | Binário | Não iniciado |
| 46 | 5.6 | Deploy + Validação | 12d | 2026-10-07 | 2026-10-23 |  | start no earlier than 2026-10-07 | Binário Cloud | Binário | Não iniciado |
| 47 | 5.7 | Começar coleta Fortaleza | 12d | 2026-10-07 | 2026-10-23 |  | start no earlier than 2026-10-07 | Binário Cloud | Binário | Não iniciado |
| 48 | 5.8 | Deploy + Validação | 12d | 2026-10-07 | 2026-10-23 |  | start no earlier than 2026-10-07 | Binário Cloud | Binário | Não iniciado |
| 49 | 5.9 | Desabilitar o menu da calculadora da Binário na V1 ou apontá-lo para o endereço interno (VPN) | 4d | 2026-10-13 | 2026-10-16 |  | start no earlier than 2026-10-13 | Binário Cloud | Binário | Não iniciado |
| 50 | 5.10 | Ajustar as VMs da POC para produção (nomes, rede, recursos e isolamento dos serviços) | 9d | 2026-10-13 | 2026-10-23 |  | start no earlier than 2026-10-13 | Algar | Algar | Não iniciado |
| 51 | 5.11 | Gerar a chave privada e o CSR e emitir um único certificado para os dois domínios | 5d | 2026-10-15 | 2026-10-21 |  | start no earlier than 2026-10-15 | Algar | Algar | Não iniciado |
| 52 | 5.12 | Criar o seletor de região no painel de consumo | 6d | 2026-10-19 A | 2026-10-26 A | 100% | start no earlier than 2026-10-19 | Binário Cloud | Binário | Concluído |
| 53 | 5.13 | Liberar firewall e acesso externo conforme domínio e local de hospedagem | 6d | 2026-10-21 | 2026-10-28 |  | start no earlier than 2026-10-21 | Algar | Algar | Não iniciado |

Notes:
- 30: Responsável: Binário · Guilherme Lopes / Diogo Lerison / Status no painel: Não iniciado / Origem: atividade definida no planejamento / Comentário: Enviar o link para o time Algar (endpoints da API de SKUs e flavors) Tabela 17 já existente / Responsável (pessoa): Guilherme Lopes / Diogo Lerison
- 31: Responsável: Binário · Guilherme Soares / Status no painel: Em andamento / Origem: atividade definida no planejamento / Comentário: Detalhar as solicitações da API de SKUs e flavors para centralização de custos (relatórios, Snowflake) / Responsável (pessoa): Guilherme Soares
- 32: Responsável: Binário · Guilherme Lopes / Status no painel: Não iniciado / Origem: atividade definida no planejamento / Comentário: Entender com o time consumidor o formato esperado e se precisa de preço ou só de especificação / Responsável (pessoa): Guilherme Lopes
- 33: Responsável: Binário · Guilherme Lopes / Status no painel: Não iniciado / Origem: atividade definida no planejamento / Responsável (pessoa): Guilherme Lopes
- 34: Responsável: Binário · Guilherme Soares / Status no painel: Não iniciado / Origem: atividade definida no planejamento / Responsável (pessoa): Guilherme Soares
- 35: Responsável: Binário · Guilherme Soares / Diogo Lerison / Status no painel: Não iniciado / Origem: atividade definida no planejamento / Responsável (pessoa): Guilherme Soares / Diogo Lerison
- 36: Responsável: Binário · Guilherme Lopes / Status no painel: Não iniciado / Origem: atividade definida no planejamento / Responsável (pessoa): Guilherme Lopes
- 37: Responsável: Binário · Guilherme Lopes / Status no painel: Não iniciado / Origem: atividade definida no planejamento / Responsável (pessoa): Guilherme Lopes
- 38: Responsável: Binário · Guilherme Lopes / Status no painel: Não iniciado / Origem: atividade definida no planejamento / Responsável (pessoa): Guilherme Lopes
- 39: Responsável: Binário + Algar · Diogo Lerison / Guilherme Lopes / Joab de Araújo Silva / Algar / Status no painel: Não iniciado / Origem: atividade definida no planejamento / Responsável (pessoa): Diogo Lerison / Guilherme Lopes / Joab de Araújo Silva / Algar
- 41: Responsável: Binário · Guilherme Soares / Status no painel: Concluído / Origem: atividade definida no planejamento / Comentário: Deploy concluído: precisão de 6 casas decimais Os preços de SKU, os valores de consumo (on demand e mensal) e o total da fatura passaram a ser calculados e gravados com 6 casas decimais. / Responsável (pessoa): Guilherme Soares
- 42: Responsável: Binário · Joab de Araújo Silva / Guilherme Lopes / Guilherme Soares / Status no painel: Concluído / Origem: atividade definida no planejamento / Comentário: (CPU, memória, disco, redundância) 3 de produção, servidor atual utilizado para POC será usado para teste IP privado para configuração do VIP Flavor 8-32 volume: 500Gb Possibilidade de alto uso de disco ser os logs do Gitlab / Responsável (pessoa): Joab de Araújo Silva / Guilherme Lopes / Guilherme Soares
- 43: Responsável: Algar · Algar (a definir) / Status no painel: Não iniciado / Origem: atividade definida no planejamento / Responsável (pessoa): Algar (a definir)
- 44: Responsável: Algar · Algar (a definir) / Status no painel: Não iniciado / Origem: atividade definida no planejamento / Responsável (pessoa): Algar (a definir)
- 45: Responsável: Binário · Guilherme Soares / Status no painel: Não iniciado / Origem: atividade definida no planejamento / Responsável (pessoa): Guilherme Soares
- 46: Responsável: Binário · Guilherme Soares / Status no painel: Não iniciado / Origem: atividade definida no planejamento / Responsável (pessoa): Guilherme Soares
- 47: Responsável: Binário · Guilherme Soares / Status no painel: Não iniciado / Origem: atividade definida no planejamento / Responsável (pessoa): Guilherme Soares
- 48: Responsável: Binário · Guilherme Soares / Status no painel: Não iniciado / Origem: atividade definida no planejamento / Responsável (pessoa): Guilherme Soares
- 49: Responsável: Binário · Guilherme Lopes / Status no painel: Não iniciado / Origem: atividade definida no planejamento / Responsável (pessoa): Guilherme Lopes
- 50: Responsável: Algar · Algar (a definir) / Status no painel: Não iniciado / Origem: atividade definida no planejamento / Responsável (pessoa): Algar (a definir)
- 51: Responsável: Algar · Algar (a definir) / Status no painel: Não iniciado / Origem: atividade definida no planejamento / Responsável (pessoa): Algar (a definir)
- 52: Responsável: Binário · Joab de Araújo Silva / Status no painel: Concluído / Origem: atividade definida no planejamento / Responsável (pessoa): Joab de Araújo Silva
- 53: Responsável: Algar · Algar (a definir) / Status no painel: Não iniciado / Origem: atividade definida no planejamento / Responsável (pessoa): Algar (a definir)

| ID | WBS | Task | Duration | Start | Finish | Constraint | Responsável (empresa) | Status no painel |
| --- | --- | --- | --- | --- | --- | --- | --- | --- |
| 54 | 6 | **Marco 5 — Relatório de utilização de VMs** | 20d | 2026-10-02 | 2026-10-30 |  |  |  |
| 55 | 6.1 | Marco 5 — Relatório de utilização de VMs | 20d | 2026-10-02 | 2026-10-30 | start no earlier than 2026-10-02 | A definir | Não iniciado |
| 56 | 7 | **Marco 6 — Alarmística de coleta + chamados Jira** | 17d | 2026-10-07 | 2026-10-30 |  |  |  |
| 57 | 7.1 | Marco 6 — Alarmística de coleta + chamados Jira | 17d | 2026-10-07 | 2026-10-30 | start no earlier than 2026-10-07 | A definir | Não iniciado |

Notes:
- 55: Responsável: A definir / Status no painel: Não iniciado / Origem: atividade definida no planejamento
- 57: Responsável: A definir / Status no painel: Não iniciado / Origem: atividade definida no planejamento
